# SR1421

Schedule from a web Gantt chart, 2024-08-30 to 2024-08-30.
Saturdays and Sundays are off

## Schedule

| ID | WBS | Task | Duration | Start | Finish |
| --- | --- | --- | --- | --- | --- |
| 2 | 1 | **SR1420** | 1d | 2024-08-30 | 2024-08-30 |
| 3 | 1.1 | **软件开发** | 1d | 2024-08-30 | 2024-08-30 |
| 4 | 1.1.1 | 技术方案 | 1d | 2024-08-30 | 2024-08-30 |
| 5 | 1.1.2 | 设计规格书 | 1d | 2024-08-30 | 2024-08-30 |
| 6 | 1.1.3 | 代码实现 | 1d | 2024-08-30 | 2024-08-30 |
| 7 | 1.1.4 | 单元测试 | 1d | 2024-08-30 | 2024-08-30 |
| 8 | 1.2 | **软件集成** | 1d | 2024-08-30 | 2024-08-30 |
| 9 | 1.2.1 | 集成计划 | 1d | 2024-08-30 | 2024-08-30 |
| 10 | 1.2.2 | 集成测试 | 1d | 2024-08-30 | 2024-08-30 |
| 11 | 1.2.3 | 集成报告 | 1d | 2024-08-30 | 2024-08-30 |
| 12 | 1.3 | **软件测试** | 1d | 2024-08-30 | 2024-08-30 |
| 13 | 1.3.1 | 测试计划 | 1d | 2024-08-30 | 2024-08-30 |
| 14 | 2 | 软件测试 | 1d | 2024-08-30 | 2024-08-30 |
| 15 | 3 | 测试报告 | 1d | 2024-08-30 | 2024-08-30 |
